# 施工进度

Schedule from a web Gantt chart, 2025-07-23 to 2025-09-14.
Every day is a working day

## Schedule

| ID | WBS | Task | Duration | Start | Finish |
| --- | --- | --- | --- | --- | --- |
| 2 | 1 | 现场准备、深化设计、交底、临时设施、防水 | 54d | 2025-07-23 | 2025-09-14 |
